# Cronograma

Schedule from MS Project, 2018-05-28 to 2018-06-11, costs in $, A marks actual dates.

## Calendars

- Standard: Mon-Fri 08:00-12:00, 13:00-17:00; Sat-Sun off.

## Resources

| Resource | Rate | Cost per use |
| --- | --- | --- |
| Eduardo Faggiani | 15 | 15 |
| Gabriel Oraboni Carvalho | 15 | 15 |
| Renam Makoto Aono | 15 | 15 |
| Vinícius de Oliveira Souza | 15 | 15 |
| Ana Caroline Costa Passos | 15 | 15 |
| Cliente |  |  |

## Schedule

| ID | WBS | Task | Duration | Start | Finish | Predecessors | Complete | Remaining | Total slack | Resources | Work | Actual work | Cost | Baseline cost | Actual cost |
| --- | --- | --- | --- | --- | --- | --- | --- | --- | --- | --- | --- | --- | --- | --- | --- |
| 1 | 1 | **SuperMaps** | 10.12d | 2018-05-28 08:00 A | 2018-06-11 09:00 |  | 69% | 3.16d | 0d |  | 118h | 66h | 2,325 | 7,605 | 1,320 |
| 2 | 1.1 | **Prospecção** | 0.5d | 2018-05-28 08:00 A | 2018-05-28 12:00 A |  | 100% |  |  |  | 4h | 4h | 90 | 210 | 90 |
| 3 | 1.1.1 | Reunião com o Cliente | 2h | 2018-05-28 08:00 A | 2018-05-28 10:00 A |  | 100% |  |  | Eduardo Faggiani | 2h | 2h | 45 | 105 | 45 |
| 4 | 1.1.2 | Redigir Ata de Reunião | 2h | 2018-05-28 10:00 A | 2018-05-28 12:00 A | 3 | 100% |  |  | Ana Caroline Costa Passos | 2h | 2h | 45 | 105 | 45 |
| 5 | 1.2 | **Análise** | 1.88d | 2018-05-28 13:00 A | 2018-05-30 11:00 A | 4 | 100% |  |  |  | 15h | 15h | 195 | 900 | 195 |
| 6 | 1.2.1 | Redigir Documento de Requisitos | 6h | 2018-05-28 13:00 A | 2018-05-29 10:00 A | 4 | 100% |  |  | Renam Makoto Aono | 6h | 6h | 105 | 210 | 105 |
| 7 | 1.2.2 | Revisar Documento de Requisitos | 5h | 2018-05-29 10:00 A | 2018-05-29 16:00 A | 6 | 100% |  |  | Gabriel Oraboni Carvalho | 5h | 5h | 90 | 240 | 90 |
| 8 | 1.2.3 | Aprovação do Cliente | 4h | 2018-05-29 16:00 A | 2018-05-30 11:00 A | 7 | 100% |  |  | Cliente | 4h | 4h |  |  |  |
| 9 | 1.3 | **Projeto** | 0.38d | 2018-05-30 11:00 A | 2018-05-30 15:00 A | 8 | 100% |  |  |  | 3h | 3h | 75 | 450 | 75 |
| 10 | 1.3.1 | **Diagrama de Classes** | 0.25d | 2018-05-30 11:00 A | 2018-05-30 14:00 A | 8 | 100% |  |  |  | 2h | 2h | 45 | 180 | 45 |
| 11 | 1.3.1.1 | Elaborar Diagrama de Classes | 2h | 2018-05-30 11:00 A | 2018-05-30 14:00 A | 8 | 100% |  |  | Renam Makoto Aono | 2h | 2h | 45 | 90 | 45 |
| 12 | 1.3.2 | **Modelo entidade relacionamento** | 0.12d | 2018-05-30 14:00 A | 2018-05-30 15:00 A |  | 100% |  |  |  | 1h | 1h | 30 | 270 | 30 |
| 13 | 1.3.2.1 | Elaborar MER | 1h | 2018-05-30 14:00 A | 2018-05-30 15:00 A | 11 | 100% |  |  | Vinícius de Oliveira Souza | 1h | 1h | 30 | 180 | 30 |
| 14 | 1.4 | **Planejamento** | 0.75d | 2018-05-30 11:00 A | 2018-05-31 09:00 A | 8 | 100% |  |  |  | 6h | 6h | 135 | 435 | 135 |
| 15 | 1.4.1 | Reunir com a Equipe | 2h | 2018-05-30 11:00 A | 2018-05-30 14:00 A | 8 | 100% |  |  | Gabriel Oraboni Carvalho | 2h | 2h | 45 | 135 | 45 |
| 16 | 1.4.2 | Redigir Plano de Projeto | 2h | 2018-05-30 14:00 A | 2018-05-30 16:00 A | 15 | 100% |  |  | Eduardo Faggiani | 2h | 2h | 45 | 165 | 45 |
| 17 | 1.4.3 | Redigir EAP | 2h | 2018-05-30 16:00 A | 2018-05-31 09:00 A | 16 | 100% |  |  | Ana Caroline Costa Passos | 2h | 2h | 45 | 135 | 45 |
| 18 | 1.5 | **Monitoramento e Controle** | 0.25d | 2018-05-31 09:00 A | 2018-05-31 11:00 A | 17 | 100% |  |  |  | 2h | 2h | 45 | 105 | 45 |
| 19 | 1.5.1 | Definir Processo de Monitoramento e Controle do Projeto | 2h | 2018-05-31 09:00 A | 2018-05-31 11:00 A | 17 | 100% |  |  | Renam Makoto Aono | 2h | 2h | 45 | 105 | 45 |
| 20 | 1.6 | **Controle de Mudanças** | 0.38d | 2018-05-31 11:00 A | 2018-05-31 15:00 A | 19 | 100% |  |  |  | 3h | 3h | 60 | 150 | 60 |
| 21 | 1.6.1 | Definir Processo de Mudanças do Projeto | 3h | 2018-05-31 11:00 A | 2018-05-31 15:00 A | 19 | 100% |  |  | Gabriel Oraboni Carvalho | 3h | 3h | 60 | 150 | 60 |
| 22 | 1.7 | **Desenvolvimento** | 6.25d | 2018-05-31 09:00 A | 2018-06-08 11:00 | 17 | 58% | 2.63d | 0d |  | 79h | 33h | 1,620 | 5,505 | 720 |
| 23 | 1.7.1 | **Release 1** | 1.5d | 2018-05-31 09:00 A | 2018-06-01 14:00 A | 17 | 100% |  |  |  | 15h | 15h | 315 | 1,080 | 315 |
| 24 | 1.7.1.1 | Implementar [RF01] Cadastrar Produto | 3h | 2018-05-31 09:00 A | 2018-05-31 12:00 A | 17 | 100% |  |  | Ana Caroline Costa Passos | 3h | 3h | 60 | 315 | 60 |
| 25 | 1.7.1.2 | Implementar [RF02] Cadastrar Usuário | 3h | 2018-05-31 09:00 A | 2018-05-31 12:00 A | 17 | 100% |  |  | Eduardo Faggiani | 3h | 3h | 60 |  | 60 |
| 26 | 1.7.1.3 | Implementar [RF03] Consultar Usuário | 2h | 2018-05-31 13:00 A | 2018-05-31 15:00 A | 25 | 100% |  |  | Vinícius de Oliveira Souza | 2h | 2h | 45 |  | 45 |
| 27 | 1.7.1.4 | Implementar [RF04] Editar Usuário | 2h | 2018-05-31 15:00 A | 2018-05-31 17:00 A | 26 | 100% |  |  | Renam Makoto Aono | 2h | 2h | 45 |  | 45 |
| 28 | 1.7.1.5 | Implementar [RF05] Remover Usuário | 2h | 2018-06-01 08:00 A | 2018-06-01 10:00 A | 27 | 100% |  |  | Ana Caroline Costa Passos | 2h | 2h | 45 |  | 45 |
| 29 | 1.7.1.6 | Implementar [RF06] Cadastrar Mapa | 3h | 2018-06-01 10:00 A | 2018-06-01 14:00 A | 28 | 100% |  |  | Eduardo Faggiani | 3h | 3h | 60 | 420 | 60 |

| ID | WBS | Task | Duration | Start | Finish | Predecessors | Complete | Total slack | Resources | Work | Actual work | Cost | Baseline cost | Actual cost |
| --- | --- | --- | --- | --- | --- | --- | --- | --- | --- | --- | --- | --- | --- | --- |
| 30 | 1.7.2 | **Release 2** | 2.25d | 2018-06-01 14:00 A | 2018-06-05 16:00 A | 23 | 100% |  |  | 18h | 18h | 405 | 1,140 | 405 |
| 31 | 1.7.2.1 | Implementar [RF07] Editar Mapa | 2h | 2018-06-01 14:00 A | 2018-06-01 16:00 A | 29 | 100% |  | Ana Caroline Costa Passos | 2h | 2h | 45 |  | 45 |
| 32 | 1.7.2.2 | Implementar [RF08] Remover Mapa | 2h | 2018-06-01 16:00 A | 2018-06-04 09:00 A | 31 | 100% |  | Vinícius de Oliveira Souza | 2h | 2h | 45 |  | 45 |
| 33 | 1.7.2.3 | Implementar [RF09] Consultar Mapa | 2h | 2018-06-04 09:00 A | 2018-06-04 11:00 A | 32 | 100% |  | Gabriel Oraboni Carvalho | 2h | 2h | 45 |  | 45 |
| 34 | 1.7.2.4 | Implementar [RF10] Cadastrar Prateleira | 2h | 2018-06-04 11:00 A | 2018-06-04 14:00 A | 33 | 100% |  | Renam Makoto Aono | 2h | 2h | 45 | 360 | 45 |
| 35 | 1.7.2.5 | Implementar [RF11] Editar Prateleira | 2h | 2018-06-04 14:00 A | 2018-06-04 16:00 A | 34 | 100% |  | Vinícius de Oliveira Souza | 2h | 2h | 45 | 135 | 45 |
| 36 | 1.7.2.6 | Implementar [RF12] Consultar Prateleira | 2h | 2018-06-04 16:00 A | 2018-06-05 09:00 A | 35 | 100% |  | Renam Makoto Aono | 2h | 2h | 45 | 150 | 45 |
| 37 | 1.7.2.7 | Implementar [RF13] Remover Prateleira | 2h | 2018-06-05 09:00 A | 2018-06-05 11:00 A | 36 | 100% |  | Eduardo Faggiani | 2h | 2h | 45 | 90 | 45 |
| 38 | 1.7.2.8 | Implementar [RF14] Inserir Prateleira no Mapa | 2h | 2018-06-05 11:00 A | 2018-06-05 14:00 A | 37 | 100% |  | Gabriel Oraboni Carvalho | 2h | 2h | 45 | 240 | 45 |
| 39 | 1.7.2.9 | Implementar [RF15] Inserir Produtos na Prateleira | 2h | 2018-06-05 14:00 A | 2018-06-05 16:00 A | 38 | 100% |  | Ana Caroline Costa Passos | 2h | 2h | 45 | 165 | 45 |
| 40 | 1.7.3 | **Release 3** | 1.25d | 2018-06-05 16:00 | 2018-06-07 09:00 | 30 |  | 0d |  | 26h |  | 510 | 1,605 |  |
| 41 | 1.7.3.1 | Implementar [RF16] Remover Produto na Prateleira | 2h | 2018-06-05 16:00 | 2018-06-06 09:00 | 39 |  | 0d | Ana Caroline Costa Passos | 2h |  | 45 | 135 |  |
| 42 | 1.7.3.2 | Implementar [RF17] Atualizar Produto na Prateleira | 2h | 2018-06-05 16:00 | 2018-06-06 09:00 | 39 |  | 0d | Vinícius de Oliveira Souza | 2h |  | 45 | 135 |  |
| 43 | 1.7.3.3 | Implementar [RF18] Consultar Produto | 2h | 2018-06-05 16:00 | 2018-06-06 09:00 | 39 |  | 0d | Renam Makoto Aono | 2h |  | 45 | 135 |  |
| 44 | 1.7.3.4 | Implementar [RF19] Localizar Produto no Supermercado | 4h | 2018-06-06 09:00 | 2018-06-06 14:00 | 39, 41, 42, 43 |  | 0d | Eduardo Faggiani; Vinícius de Oliveira Souza | 8h |  | 150 | 480 |  |
| 45 | 1.7.3.5 | Implementar [RF20] Calcular menor caminho para compras | 4h | 2018-06-06 14:00 | 2018-06-07 09:00 | 44 |  | 0d | Gabriel Oraboni Carvalho; Ana Caroline Costa Passos; Eduardo Faggiani | 12h |  | 225 | 720 |  |
| 46 | 1.7.4 | **Release 4** | 1.25d | 2018-06-07 09:00 | 2018-06-08 11:00 | 45 |  | 0d |  | 20h |  | 390 | 1,680 |  |
| 47 | 1.7.4.1 | Implementar [RF21] Emissão do menor caminho | 2h | 2018-06-07 09:00 | 2018-06-07 11:00 | 45 |  | 0d | Eduardo Faggiani; Vinícius de Oliveira Souza | 4h |  | 90 | 480 |  |
| 48 | 1.7.4.2 | Implementar [RF22] Ranking de Produtos | 4h | 2018-06-07 11:00 | 2018-06-07 16:00 | 47 |  | 0d | Renam Makoto Aono; Ana Caroline Costa Passos | 8h |  | 150 | 480 |  |
| 49 | 1.7.4.3 | Implementar [RF23] Relatório de itens mais visitados no supermercado | 4h | 2018-06-07 16:00 | 2018-06-08 11:00 | 48 |  | 0d | Gabriel Oraboni Carvalho; Eduardo Faggiani | 8h |  | 150 | 720 |  |
| 50 | 1.8 | **Fechamento** | 0.75d | 2018-06-08 11:00 | 2018-06-11 09:00 | 49 |  | 0d |  | 6h |  | 105 | 300 |  |
| 51 | 1.8.1 | Documento de Aprovação do Cliente | 6h | 2018-06-08 11:00 | 2018-06-11 09:00 | 49 |  | 0d | Ana Caroline Costa Passos | 6h |  | 105 | 300 |  |
